# 软件开发

Schedule from MS Project, 2017-05-01 to 2017-06-21.

## Calendars

- 标准: Mon-Fri 08:00-12:00, 13:00-17:00; Sat-Sun off. Exceptions (off unless hours are given): 2017-05-06 to 2017-05-07 08:00-12:00, 13:00-17:00, 2017-05-13 to 2017-05-14 08:00-12:00, 13:00-17:00, 2017-05-20 to 2017-05-21 08:00-12:00, 13:00-17:00, 2017-05-27 to 2017-05-28 08:00-12:00, 13:00-17:00, 2017-06-03 to 2017-06-04 08:00-12:00, 13:00-17:00, 2017-06-10 to 2017-06-11 08:00-12:00, 13:00-17:00, 2017-06-17 to 2017-06-18 08:00-12:00, 13:00-17:00.

## Resources

| Resource |
| --- |
| 管理人员 |
| 项目经理 |
| 分析人员 |
| 开发人员 |
| 测试人员 |
| 技术联络人员 |

## Schedule

| ID | WBS | Task | Type | Duration | Start | Finish | Predecessors | Total slack | Free slack | Constraint | Resources | Work |
| --- | --- | --- | --- | --- | --- | --- | --- | --- | --- | --- | --- | --- |
| 1 | 1 | **项目范围规划** |  | 1.5d | 2017-05-01 | 2017-05-02 |  | 9.75d |  |  |  | 12h |
| 2 | 1.1 | 确定项目范围 |  | 4h | 2017-05-01 | 2017-05-01 |  | 7.75d | 0d | start no earlier than 2017-05-01 | 管理人员 | 4h |
| 3 | 1.2 | 定义预备资源/获得核心资源 |  | 1d | 2017-05-01 | 2017-05-02 | 2 | 7.75d | 0d |  | 项目经理 | 8h |
| 4 | 1.3 | 项目范围规划完成 | milestone | 0d | 2017-05-02 | 2017-05-02 | 3 | 7.75d | 0.5d |  |  |  |
| 5 | 2 | **分析/软件需求** |  | 8d | 2017-05-03 | 2017-05-10 |  | 9.25d |  |  |  | 72h |
| 6 | 2.1 | 行为需求分析 |  | 3d | 2017-05-03 | 2017-05-05 | 4 | 7.25d | 0d | start no earlier than 2017-05-03 | 分析人员 | 24h |
| 7 | 2.2 | 起草初步的软件规范(需求规格说明) |  | 3d | 2017-05-06 | 2017-05-08 | 6 | 7.25d | 0d |  | 分析人员 | 24h |
| 8 | 2.3 | 工作组共同审阅软件规范/预算 |  | 4h | 2017-05-09 | 2017-05-09 | 7 | 7.25d | 0d |  | 项目经理; 分析人员 | 8h |
| 9 | 2.4 | 获得开展后续工作的批准(概念、期限和预算) |  | 4h | 2017-05-09 | 2017-05-09 | 8 | 7.25d | 0d |  | 管理人员; 项目经理 | 8h |
| 10 | 2.5 | 获得所需资源 |  | 1d | 2017-05-10 | 2017-05-10 | 9 | 7.25d | 0d |  | 项目经理 | 8h |
| 11 | 2.6 | 分析工作完成 | milestone | 0d | 2017-05-10 | 2017-05-10 | 10 | 7.25d | 0d |  |  |  |
| 12 | 3 | **设计** |  | 6.5d | 2017-05-11 | 2017-05-17 |  | 9.25d |  |  |  | 56h |
| 13 | 3.1 | 审阅初步的软件规范 |  | 2d | 2017-05-11 | 2017-05-12 | 11 | 7.25d | 0d |  | 分析人员 | 16h |
| 14 | 3.2 | 制定功能规范(概要设计) |  | 1d | 2017-05-13 | 2017-05-13 | 13 | 7.25d | 0d | finish no earlier than 2017-05-13 | 分析人员 | 8h |
| 15 | 3.3 | 根据功能规范开发原型(详细设计) |  | 3d | 2017-05-14 | 2017-05-16 | 14 | 7.25d | 0d | finish no earlier than 2017-05-15 | 分析人员 | 24h |
| 16 | 3.4 | 获得开展后续工作的批准 |  | 4h | 2017-05-17 | 2017-05-17 | 15 | 7.25d | 0d |  | 管理人员; 项目经理 | 8h |
| 17 | 3.5 | 设计工作完成 | milestone | 0d | 2017-05-17 | 2017-05-17 | 16 | 7.25d | 0d |  |  |  |
| 18 | 4 | **开发** |  | 20.25d | 2017-05-17 | 2017-06-06 |  | 9.25d |  |  |  | 252h |
| 19 | 4.1 | 审阅功能规范 |  | 1d | 2017-05-17 | 2017-05-18 | 17 | 7.25d | 0d | finish no earlier than 2017-05-16 | 开发人员 | 8h |
| 20 | 4.2 | 确定模块化/分层设计参数/分派任务给开发人员 |  | 4h | 2017-05-18 | 2017-05-18 | 19 | 7.25d | 0d | finish no earlier than 2017-05-17 | 开发人员 | 4h |
| 21 | 4.3 | 编写代码 |  | 15d | 2017-05-19 | 2017-06-02 | 20 | 9.25d | 0d |  | 开发人员 | 120h |
| 22 | 4.4 | 开发人员测试(初步调试) |  | 15d | 2017-05-22 | 2017-06-06 | 21FS-7.5% | 9.25d | 0d |  | 开发人员 | 120h |
| 23 | 4.5 | 开发工作完毕 | milestone | 0d | 2017-06-06 | 2017-06-06 | 22 | 9.25d | 0d |  |  |  |
| 24 | 5 | **测试** |  | 29.5d | 2017-05-17 | 2017-06-15 |  | 6d |  |  |  | 208h |
| 25 | 5.1 | 根据产品规范制定单元测试计划 |  | 4d | 2017-05-17 | 2017-05-21 | 17 | 10.5d | 5.5d |  | 测试人员 | 32h |
| 26 | 5.2 | 根据产品规范制定整体测试计划 |  | 4d | 2017-05-17 | 2017-05-21 | 17 | 31.5d |  |  | 测试人员 | 32h |

| ID | WBS | Task | Type | Duration | Start | Finish | Predecessors | Total slack | Free slack | Constraint | Resources | Work |
| --- | --- | --- | --- | --- | --- | --- | --- | --- | --- | --- | --- | --- |
| 27 | 5.3 | **单元测试** |  | 11d | 2017-05-27 | 2017-06-06 |  | 4d |  |  |  | 80h |
| 28 | 5.3.1 | 审阅模块化代码 |  | 2d | 2017-05-27 | 2017-05-28 | 25, 23FS-15d | 5d | 1d | start no earlier than 2017-05-27 | 测试人员 | 16h |
| 29 | 5.3.2 | 测试组件模块是否符合产品规范 |  | 2d | 2017-05-30 | 2017-05-31 | 23FS-15d, 28 | 4d | 0d | start no earlier than 2017-05-30 | 测试人员 | 16h |
| 30 | 5.3.3 | 找出不符合产品规范的异常情况 |  | 1d | 2017-06-01 | 2017-06-01 | 29 | 4d | 0d | start no earlier than 2017-06-01 | 测试人员 | 8h |
| 31 | 5.3.4 | 修改代码 |  | 3d | 2017-06-02 | 2017-06-04 | 30 | 4d | 0d |  | 测试人员 | 24h |
| 32 | 5.3.5 | 重新测试经过修改的代码 |  | 2d | 2017-06-05 | 2017-06-06 | 31 | 4d | 0d |  | 测试人员 | 16h |
| 33 | 5.3.6 | 单元测试完成 | milestone | 0d | 2017-06-06 | 2017-06-06 | 32 | 4d | 1d |  |  |  |
| 34 | 5.4 | **整体测试** |  | 8d | 2017-06-08 | 2017-06-15 |  | 3d |  |  |  | 64h |
| 35 | 5.4.1 | 测试模块集成情况 |  | 2d | 2017-06-08 | 2017-06-09 | 33 | 3d | 0d | finish no earlier than 2017-06-09 | 测试人员 | 16h |
| 36 | 5.4.2 | 找出不符合规范的异常情况 |  | 1d | 2017-06-10 | 2017-06-10 | 35 | 4d | 0d |  | 测试人员 | 8h |
| 37 | 5.4.3 | 修改代码 |  | 3d | 2017-06-11 | 2017-06-13 | 36 | 4d | 0d |  | 测试人员 | 24h |
| 38 | 5.4.4 | 重新测试经过修改的代码 |  | 2d | 2017-06-14 | 2017-06-15 | 37 | 4d | 0d |  | 测试人员 | 16h |
| 39 | 5.4.5 | 整体测试完成 | milestone | 0d | 2017-06-15 | 2017-06-15 | 38 | 4d |  |  |  |  |
| 40 | 6 | **文档** |  | 33.5d | 2017-05-17 | 2017-06-19 |  | 0d |  |  |  | 120h |
| 41 | 6.1 | 制定需求规格说明书 |  | 2d | 2017-05-17 | 2017-05-19 | 17 | 23.5d | 7d |  | 技术联络人员 | 16h |
| 42 | 6.2 | 制定概要设计说明书 |  | 2d | 2017-05-26 | 2017-05-28 | 41, 21FS-5% | 18.5d | 0d |  | 技术联络人员 | 16h |
| 43 | 6.3 | 制定详细设计说明书 |  | 2d | 2017-05-28 | 2017-05-30 | 42 | 18.5d | 7.25d |  | 技术联络人员 | 16h |
| 44 | 6.4 | 编写源代码清单 |  | 2d | 2017-06-06 | 2017-06-08 | 43, 23 | 11.25d |  |  | 技术联络人员 | 16h |
| 45 | 6.5 | 编撰测试计划 |  | 2d | 2017-06-10 | 2017-06-11 | 17, 35 | 3d |  |  | 技术联络人员 | 16h |
| 46 | 6.6 | 制定用户手册规范及编写用户手册 |  | 2d | 2017-06-15 | 2017-06-16 | 45, 21FS-5% | 0d |  | finish no earlier than 2017-06-16 | 技术联络人员 | 16h |
| 47 | 6.7 | 审阅所有的文档 |  | 2d | 2017-06-17 | 2017-06-18 | 46 | 0d |  |  | 技术联络人员 | 16h |
| 48 | 6.8 | 根据反馈修改文档 |  | 1d | 2017-06-19 | 2017-06-19 | 47 | 0d |  |  | 技术联络人员 | 8h |
| 49 | 6.9 | 文档完成 | milestone | 0d | 2017-06-19 | 2017-06-19 | 48, 44 | 0d |  |  |  |  |
| 50 | 7 | **试生产** |  | 1d | 2017-05-11 | 2017-05-11 |  | 41d |  |  |  | 8h |
| 51 | 7.1 | 确定测试群体 |  | 1d | 2017-05-11 | 2017-05-11 | 11 | 39d | 0d |  | 项目经理 | 8h |
| 52 | 7.2 | 试生产工作完成 | milestone | 0d | 2017-05-11 | 2017-05-11 | 51 | 39d |  |  |  |  |

| ID | WBS | Task | Type | Duration | Start | Finish | Predecessors | Total slack | Resources | Work |
| --- | --- | --- | --- | --- | --- | --- | --- | --- | --- | --- |
| 53 | 8 | **实施工作结束后的回顾** |  | 2d | 2017-06-20 | 2017-06-21 |  | 0d |  | 16h |
| 54 | 8.1 | 将经验教训记录存档 |  | 1d | 2017-06-20 | 2017-06-20 | 49, 39 | 0d | 项目经理 | 8h |
| 55 | 8.2 | 分发给工作组成员 |  | 1d | 2017-06-21 | 2017-06-21 | 54 | 0d | 项目经理 | 8h |
| 56 | 8.3 | 回顾完成 | milestone | 0d | 2017-06-21 | 2017-06-21 | 55 | 0d |  |  |
| 57 | 9 | 软件开发结束 | milestone | 0d | 2017-06-21 | 2017-06-21 | 56 | 0d |  |  |
